# Development of an ultra-wide band indoor positioning system

Schedule from GanttProject, 2017-09-19 to 2018-01-15.
LSRO
Holidays every year on 01-01, 01-02, 08-01, 12-25, 12-26

## Calendars

- Project calendar: Mon-Fri working; Sat-Sun off. Exceptions (off unless hours are given): 2017-12-24, 2017-12-27 to 2018-01-02.

## Schedule

| ID | Task | Type | Duration | Start | Finish | Predecessors | Complete |
| --- | --- | --- | --- | --- | --- | --- | --- |
| 1 | Début projet | milestone | 0d | 2017-09-19 | 2017-09-19 |  |  |
| 2 | State of the art |  | 15d | 2017-09-19 | 2017-10-09 | 1 | 25% |
| 3 | Design algorithme |  | 10d | 2017-10-10 | 2017-10-23 | 2 |  |
| 4 | Simulation algorithme choisi |  | 15d | 2017-10-24 | 2017-11-13 | 3, 5 |  |
| 5 | Test DMP |  | 3d | 2017-09-28 | 2017-10-02 |  |  |
| 6 | Driver IMU |  | 5d | 2017-09-19 | 2017-09-25 | 1 | 100% |
| 7 | Communication CAN |  | 4d | 2017-09-26 | 2017-09-29 |  | 100% |
| 8 | Driver DWM1000 |  | 5d | 2017-10-02 | 2017-10-06 |  |  |
| 9 | Ranging protocol |  | 20d | 2017-10-09 | 2017-11-03 | 8 |  |
| 10 | Param storage |  | 1d | 2017-11-03 | 2017-11-03 |  |  |
| 11 | Collecte data |  | 5d | 2017-11-06 | 2017-11-10 | 6, 7, 9, 10 |  |
| 12 | Test algos sur vrai data |  | 5d | 2017-11-14 | 2017-11-20 | 4, 11 |  |
| 13 | Port algorithmes |  | 15d | 2017-11-21 | 2017-12-11 | 12 |  |
| 14 | Tests |  | 5d | 2017-12-12 | 2017-12-18 | 13 |  |
| 15 | Ecriture rapport |  | 5d | 2018-01-08 | 2018-01-12 |  |  |
| 16 | Rendu rapport | milestone | 0d | 2018-01-15 | 2018-01-15 | 15 |  |

Notes:
- 2: Lecture de papers sur UWB systems / Skim through "Probabilistic Robotics" / Rédaction d'une review / Buts: / * Trouver comment les gens ont implémenté les systèmes UWB + IMU / * Trouver quel sont les sources possibles d'imprécision / * Comment modéliser les capteurs (ex: drift du gyro intégré dans le state) / * Est-ce que le magnétomètre est intéressant ?
- 3: Cette partie est purement théorique. Le but est de dériver les expressions mathématiques du (ou des) state estimator que je pense utiliser pour le robot.
- 4: * Implémentation de l'algorithme choisi en Python / * Simulation sur des trajectoires générées / * Comparaison de l'effet des différentes sources de bruit / Eventuellement, si plusieurs estimateurs ont été implémentés, comparaison entre eux.
- 5: Test du motion processor intégré au MPU9250. / Particuliérement intéressé par le mode "Quaternion 9 axis"
- 6: * Ecriture d'un driver pour le IMU intégré au système / * Utilisation des interrupts pour maximiser la fréquence de lecture du système. / * Publication sur messagebus pour faciliter le traitement
- 7: Vu que le système comprend un nombre important de cartes (minimum 2, probablement 4), devoir se connecter à chaque carte une par une à la main est laborieux. Dans ce but, un bus de communication câblé est utilisé pendant les phases de debug, de configuration et de collecte de données. / Pour gagner du temps, je vais réutiliser des outils avec les quels je travaille depuis longtemps et basé sur le bus physique CAN: / * le bootloader CAN du CVRA (https://github.com/cvra/can-bootloader), pour uploader le code. Il est déjà porté sur le hardware. / * UAVCAN (https://github.com/uavcan), pour fournir des fonctions haut niveau de communication. / * Un dongle CAN-USB pour interfacer l'ensemble des cartes à mon ordinateur.
- 8: Buts de cette étape: / * Driver suffisant pour envoyer / recevoir des paquets avec gestion des timestamps (nécessaire pour le ranging protocol).
- 9: Implémentation du ranging protocol, c'est à dire la séquence d'information échangée entre une balise fixe et le système embarqué sur le robot pour connaitre la position de la balise et la distance à celle ci. / Decawave fournit une explication sur leur 4-way ranging protocol, peut être que des adaptations seront nécessaires, à voir.
- 11: Le but de cette étape est de collecter des données sur une trajectoire réelle. Pendant ce temps les infos suivantes sont enregistrées sur un ordinateur: / * Output IMU / * Mesures de distance avec des beacons / Le but est ensuite de pouvoir tester l'algorithme de positionnement sur des datasets réels au lieu de simulés.
- 12: Le but de cette étape est de charger les données obtenues dans les algorithmes utilisés en simulation pour observer les performances de l'estimateur dans des conditions réelles. / Une analyse de la précision du système pourra déjà être faite à ce moment là.
- 13: Pendant cette tâche, le code développé en Python et simulé sera porté en C / C++, et comparé au code simulé. Dans ce but, il sera capable de fonctionner aussi bien sur le PC hôte que sur le STM32. / A la fin de cette tâche, les deux algorithmes (en Python et en C) doivent donner les mêmes résultats.
- 14: Tests du système final et mesure des performances. / Debug final.
